Schedule from MS Project, 2025-08-18 to 2025-10-21, costs in R$, A marks actual dates.

## Calendars

- Padrão: Mon-Fri 09:00-12:00, 13:00-18:00; Sat-Sun off.

## Resources

| Resource | Rate |
| --- | --- |
| Carlos | 150 |
| Vivian | 150 |
| Cliente |  |
| Thiago | 150 |

## Schedule

| ID | WBS | Task | Type | Duration | Start | Finish | Predecessors | Complete | Remaining | Total slack | Constraint | Resources | Work | Actual work | Cost | Actual cost |
| --- | --- | --- | --- | --- | --- | --- | --- | --- | --- | --- | --- | --- | --- | --- | --- | --- |
| 1 | 1 | **Projeto ProfScore** |  | 46.12d | 2025-08-18 A | 2025-10-21 |  | 41% | 27.28d | 0d |  |  | 312h | 101h | 46,650 | 15,000 |
| 2 | 1.1 | **Prospecção** |  | 8d | 2025-08-18 A | 2025-08-27 A |  | 100% |  |  |  |  | 20h | 20h | 3,000 | 3,000 |
| 3 | 1.1.1 | **PTEC** |  | 4d | 2025-08-18 A | 2025-08-21 A |  | 100% |  |  |  |  | 14h | 14h | 2,100 | 2,100 |
| 4 | 1.1.1.1 | Reunião com Stakeholders |  | 1d | 2025-08-18 A | 2025-08-18 A |  | 100% |  |  | start no earlier than 2025-08-18 | Carlos | 1h | 1h | 150 | 150 |
| 5 | 1.1.1.2 | Redigir PTEC |  | 2d | 2025-08-19 A | 2025-08-20 A | 4 | 100% |  |  |  | Vivian | 12h | 12h | 1,800 | 1,800 |
| 6 | 1.1.1.3 | Revisar PTEC |  | 1d | 2025-08-21 A | 2025-08-21 A | 5 | 100% |  |  |  | Carlos | 1h | 1h | 150 | 150 |
| 7 | 1.1.1.4 | Aprovar PTEC | milestone | 0d | 2025-08-21 A | 2025-08-21 A | 6 | 100% |  |  |  | Cliente |  |  |  |  |
| 8 | 1.1.2 | **Est. Prel. Tam.** |  | 2d | 2025-08-22 A | 2025-08-25 A |  | 100% |  |  |  |  | 3h | 3h | 450 | 450 |
| 9 | 1.1.2.1 | Estimar Tam. Do Projeto |  | 1d | 2025-08-22 A | 2025-08-22 A | 6 | 100% |  |  |  | Thiago | 2h | 2h | 300 | 300 |
| 10 | 1.1.2.2 | Revisar Estimativa de Tam. Do Projeto |  | 1d | 2025-08-25 A | 2025-08-25 A | 9 | 100% |  |  |  | Vivian | 1h | 1h | 150 | 150 |
| 11 | 1.1.3 | **Est. Prel. Cronograma e Orçamento** |  | 2d | 2025-08-26 A | 2025-08-27 A |  | 100% |  |  |  |  | 3h | 3h | 450 | 450 |
| 12 | 1.1.3.1 | Elaborar Cronograma e Orçamento Preliminares |  | 1d | 2025-08-26 A | 2025-08-26 A | 8 | 100% |  |  |  | Carlos | 2h | 2h | 300 | 300 |
| 13 | 1.1.3.2 | Revisar Cronograma e Orçamento Preliminares |  | 1d | 2025-08-27 A | 2025-08-27 A | 12 | 100% |  |  |  | Vivian | 1h | 1h | 150 | 150 |
| 14 | 1.2 | **Análise** |  | 3.75d | 2025-08-28 A | 2025-09-02 A |  | 100% |  |  |  |  | 30h | 30h | 4,350 | 4,350 |
| 15 | 1.2.1 | **Documento de Requisitos** |  | 2.5d | 2025-08-28 A | 2025-09-01 A |  | 100% |  |  |  |  | 20h | 20h | 2,850 | 2,850 |
| 16 | 1.2.1.1 | Reunião Com Stakeholders | manual | 0.25d | 2025-08-28 A | 2025-08-28 A | 2 | 100% |  |  |  | Thiago | 2h | 2h | 300 | 300 |
| 17 | 1.2.1.2 | Elaborar DRE | manual | 1.75d | 2025-08-28 A | 2025-08-29 A | 16 | 100% |  |  |  | Carlos | 14h | 14h | 2,100 | 2,100 |
| 18 | 1.2.1.3 | Revisar DRE | manual | 0.38d | 2025-09-01 A | 2025-09-01 A | 17 | 100% |  |  |  | Thiago | 3h | 3h | 450 | 450 |
| 19 | 1.2.1.4 | Validação com stakeholders | manual | 0.12d | 2025-09-01 A | 2025-09-01 A | 18 | 100% |  |  |  | Cliente | 1h | 1h |  |  |
| 20 | 1.2.2 | **MRB** |  | 1.25d | 2025-09-01 A | 2025-09-02 A |  | 100% |  |  |  |  | 10h | 10h | 1,500 | 1,500 |
| 21 | 1.2.2.1 | Elaborar MRB | manual | 1d | 2025-09-01 A | 2025-09-02 A | 15 | 100% |  |  |  | Vivian | 8h | 8h | 1,200 | 1,200 |
| 22 | 1.2.2.2 | Revisar MRB | manual | 0.25d | 2025-09-02 A | 2025-09-02 A | 21 | 100% |  |  |  | Thiago | 2h | 2h | 300 | 300 |
| 23 | 1.3 | **Projeto** |  | 6.12d | 2025-09-02 A | 2025-09-10 A |  | 100% |  |  |  |  | 51h | 51h | 7,650 | 7,650 |
| 24 | 1.3.1 | Definição da arquitetura | manual | 0.25d | 2025-09-02 A | 2025-09-02 A | 14 | 100% |  |  |  | Vivian | 2h | 2h | 300 | 300 |

| ID | WBS | Task | Type | Duration | Start | Finish | Predecessors | Complete | Total slack | Resources | Work | Actual work | Cost | Actual cost |
| --- | --- | --- | --- | --- | --- | --- | --- | --- | --- | --- | --- | --- | --- | --- |
| 25 | 1.3.2 | **Diagrama de Casos de Uso** |  | 1.62d | 2025-09-03 A | 2025-09-04 A |  | 100% |  |  | 14h | 14h | 2,100 | 2,100 |
| 26 | 1.3.2.1 | Elaborar Diagrama de Casos de Uso | manual | 1.5d | 2025-09-03 A | 2025-09-04 A | 24 | 100% |  | Vivian | 12h | 12h | 1,800 | 1,800 |
| 27 | 1.3.2.2 | Revisar Diagrama de Casos de Uso | manual | 0.12d | 2025-09-04 A | 2025-09-04 A | 26 | 100% |  | Thiago | 2h | 2h | 300 | 300 |
| 28 | 1.3.3 | **Diagrama de Classes** |  | 1.5d | 2025-09-04 A | 2025-09-08 A |  | 100% |  |  | 13h | 13h | 1,950 | 1,950 |
| 29 | 1.3.3.1 | Elaborar Diagrama de Classes | manual | 1.25d | 2025-09-04 A | 2025-09-05 A | 27 | 100% |  | Carlos | 10h | 10h | 1,500 | 1,500 |
| 30 | 1.3.3.2 | Revisar Diagrama de Classes | manual | 0.12d | 2025-09-05 A | 2025-09-05 A | 29 | 100% |  | Vivian | 2h | 2h | 300 | 300 |
| 31 | 1.3.3.3 | Atualizar MRB | manual | 0.12d | 2025-09-08 A | 2025-09-08 A | 30 | 100% |  | Carlos | 1h | 1h | 150 | 150 |
| 32 | 1.3.4 | **Modelo Entidade Relacionamento** |  | 1.62d | 2025-09-08 A | 2025-09-09 A |  | 100% |  |  | 13h | 13h | 1,950 | 1,950 |
| 33 | 1.3.4.1 | Elaborar MRE | manual | 1.5d | 2025-09-08 A | 2025-09-09 A | 31 | 100% |  | Vivian | 12h | 12h | 1,800 | 1,800 |
| 34 | 1.3.4.2 | Revisar MRE | manual | 0.12d | 2025-09-09 A | 2025-09-09 A | 33 | 100% |  | Carlos | 1h | 1h | 150 | 150 |
| 35 | 1.3.5 | Protótipo de interface responsiva | manual | 0.62d | 2025-09-09 A | 2025-09-10 A | 34 | 100% |  | Vivian | 5h | 5h | 750 | 750 |
| 36 | 1.3.6 | Planejamento de testes | manual | 0.25d | 2025-09-10 A | 2025-09-10 A | 35 | 100% |  | Carlos | 2h | 2h | 300 | 300 |
| 37 | 1.3.7 | Aprovação do projeto técnico | manual | 0.25d | 2025-09-10 A | 2025-09-10 A | 36 | 100% |  | Thiago | 2h | 2h | 300 | 300 |
| 38 | 1.4 | **Implementação** |  | 31.12d | 2025-09-06 | 2025-10-21 |  |  | 0d |  | 211h |  | 31,650 |  |
| 39 | 1.4.1 | **Release 01** |  | 3.5d | 2025-09-10 | 2025-09-16 |  |  | 0d |  | 28h |  | 4,200 |  |
| 40 | 1.4.1.1 | CRUD Usuários (RFS01–RFS04), cadastro, login, perfis. | manual | 1d | 2025-09-10 | 2025-09-11 | 23 |  |  | Vivian | 8h |  | 1,200 |  |
| 41 | 1.4.1.2 | CRUD Professores, criar, editar, excluir professores. | manual | 2.5d | 2025-09-11 | 2025-09-16 | 40 |  |  | Carlos | 20h |  | 3,000 |  |
| 42 | 1.4.2 | **Release 02** |  | 2.5d | 2025-09-16 | 2025-09-18 |  |  | 0d |  | 40h |  | 6,000 |  |
| 43 | 1.4.2.1 | CRUD Avaliações (RFS07–RFS08), criar, editar, excluir avaliações. | manual | 1d | 2025-09-16 | 2025-09-17 | 39 |  |  | Thiago | 20h |  | 3,000 |  |
| 44 | 1.4.2.2 | CRUD Feedbacks (RFS09–RFS10), professores e alunos inserindo feedback. | manual | 2.5d | 2025-09-16 | 2025-09-18 | 39 |  |  | Vivian | 20h |  | 3,000 |  |
| 45 | 1.4.3 | **Release 03** |  | 6.88d | 2025-09-23 | 2025-10-02 |  |  | 0d |  | 43h |  | 6,450 |  |
| 46 | 1.4.3.1 | CRUD Histórico Acadêmico (RFS13–RFS14), registro e consulta do histórico do aluno. | manual | 1d | 2025-09-23 | 2025-09-24 | 42 |  |  | Carlos | 8h |  | 1,200 |  |
| 47 | 1.4.3.2 | CRUD Relatórios (RFS05), gerenciamento de relatórios no sistema. | manual | 2.5d | 2025-09-23 | 2025-09-25 | 42 |  |  | Thiago | 20h |  | 3,000 |  |
| 48 | 1.4.3.3 | Implementação Relatório 1 (RFS06), geração/exportação de relatório básico. | manual | 1.88d | 2025-09-30 | 2025-10-02 |  |  |  | Vivian | 15h |  | 2,250 |  |

| ID | WBS | Task | Type | Duration | Start | Finish | Predecessors | Total slack | Resources | Work | Cost |
| --- | --- | --- | --- | --- | --- | --- | --- | --- | --- | --- | --- |
| 49 | 1.4.4 | **Release 04** |  | 12.88d | 2025-10-02 | 2025-10-21 |  | 0d |  | 100h | 15,000 |
| 50 | 1.4.4.1 | CRUD Pesquisa/Filtros (RFS15–RFS16), salvar consultas/filtros no sistema. | manual | 2.5d | 2025-10-02 | 2025-10-06 | 45 |  | Carlos | 20h | 3,000 |
| 51 | 1.4.4.2 | Requisitos Não Funcionais | manual | 2.5d | 2025-10-06 | 2025-10-09 | 50, 45 |  | Thiago | 20h | 3,000 |
| 52 | 1.4.4.3 | Integração frontend + backend | manual | 2.5d | 2025-10-07 | 2025-10-10 | 51 |  | Vivian | 20h | 3,000 |
| 53 | 1.4.4.4 | Testes unitários | manual | 1.25d | 2025-10-10 | 2025-10-13 | 52 |  | Carlos | 10h | 1,500 |
| 54 | 1.4.4.5 | Testes de integração | manual | 1.25d | 2025-10-13 | 2025-10-14 | 53 |  | Thiago | 10h | 1,500 |
| 55 | 1.4.4.6 | Testes de desempenho e segurança | manual | 1.25d | 2025-10-14 | 2025-10-15 | 54 |  | Vivian | 10h | 1,500 |
| 56 | 1.4.4.7 | Testes de aceitação (UAT) | manual | 1.25d | 2025-10-15 | 2025-10-17 | 55 |  | Carlos | 10h | 1,500 |
| 57 | 1.4.4.8 | Encerramento | manual | 1d | 2025-10-20 | 2025-10-21 |  |  |  |  |  |
| 58 | 1.4.5 | **Monitoramento e Controle** |  | 0d | 2025-09-06 | 2025-09-06 |  | 31.12d |  |  |  |
| 59 | 1.4.5.1 | Baseline config + GitHub/SVN | manual | 1d | 2025-09-06 | 2025-09-06 |  |  |  |  |  |
| 60 | 1.4.5.2 | Testes Selenium + Registro de Bugs | manual | 1d | 2025-09-06 | 2025-09-06 |  |  |  |  |  |
| 61 | 1.4.5.3 | Status Report | manual | 1d | 2025-09-06 | 2025-09-06 |  |  |  |  |  |
